# CoronaGantt

Schedule from MS Project, 2010-04-20 to 2010-05-18, A marks actual dates.
Fullsail

## Calendars

- Standard: Mon-Fri 08:00-12:00, 13:00-17:00; Sat-Sun off.

## Resources

| Resource |
| --- |
| Sam |
| Mike |
| Pablo |
| Jonathan |
| Xiaodong Weng |
| Mike Hatter |
| Jonathan Caro |
| Sam Mathis |

## Schedule

| ID | WBS | Task | Duration | Start | Finish | Predecessors | Total slack | Free slack | Resources | Work |
| --- | --- | --- | --- | --- | --- | --- | --- | --- | --- | --- |
| 1 | 1 | **Sprint 2** | 5.7d? | 2010-04-20 08:00 | 2010-04-27 14:36 |  | 14.7d |  |  | 168h |
| 2 | 1.1 | As a designer I want all of the buttons to function clearly and properly. | 0.2d | 2010-04-20 08:00 | 2010-04-20 09:36 |  | 15.3d | 0d | Sam | 1.6h |
| 3 | 1.2 | As a designer I want to be able to create and edit animations. | 1d? | 2010-04-20 09:36 | 2010-04-21 09:36 | 2 | 15.3d | 0d | Sam | 8h |
| 4 | 1.3 | As a developer I want an Event system to send data between objects. | 0.5d | 2010-04-21 09:36 | 2010-04-21 14:36 | 3 | 15.3d | 0d | Sam | 4h |
| 5 | 1.4 | As a developer I want to create an Object Hierarchy, and systems to support them | 1.5d | 2010-04-21 14:36 | 2010-04-23 09:36 | 4 | 15.3d | 0d | Sam | 12h |
| 6 | 1.5 | As a programmer I want to save many animations to one file, and save and load using relative paths | 0.2d | 2010-04-23 09:36 | 2010-04-23 11:12 | 5 | 15.3d | 0d | Sam | 1.6h |
| 7 | 1.6 | As a user I want to be able to control my character | 1.5d | 2010-04-23 11:12 | 2010-04-26 16:12 | 6 | 15.3d |  | Sam | 12h |
| 9 | 1.7 | As a designer I want to be able to create and edit different particle effects | 1d? | 2010-04-20 08:00 | 2010-04-20 17:00 |  | 14.5d | 0d | Mike | 8h |
| 10 | 1.8 | As a designer I want to be able to preview the particle effects before being implemented into the game | 0.2d | 2010-04-21 08:00 | 2010-04-21 09:36 | 9 | 14.5d | 0d | Mike | 1.6h |
| 11 | 1.9 | As a developer I want the particles to save and load using relative paths | 0.5d | 2010-04-21 09:36 | 2010-04-21 14:36 | 10 | 14.5d | 0d | Mike | 4h |
| 12 | 1.10 | As a programmer I want an In-Game system to load and render the particle effects | 1d | 2010-04-21 14:36 | 2010-04-22 14:36 | 11 | 14.5d | 0d | Mike | 8h |
| 13 | 1.11 | As a programmer I want the menu systems and interface to be easy to use and understand | 1d | 2010-04-22 14:36 | 2010-04-23 14:36 | 12 | 14.5d | 0d | Mike | 8h |
| 14 | 1.12 | As a user I want to be able to save and load my game. | 2d | 2010-04-23 14:36 | 2010-04-27 14:36 | 13 | 14.5d |  | Mike | 16h |
| 16 | 1.13 | As a developer I want to sumbit an Art Request to insure my game looks good. | 0.2d | 2010-04-20 08:00 | 2010-04-20 09:36 |  | 14.5d | 0d | Jonathan | 1.6h |
| 17 | 1.14 | As a programmer I want an In-Game engine to load in the animations | 1d? | 2010-04-20 09:36 | 2010-04-21 09:36 | 16 | 14.5d | 0d | Jonathan | 8h |
| 18 | 1.15 | As a user I want enemies in the game, that I can pwn | 1.5d | 2010-04-21 09:36 | 2010-04-22 14:36 | 17 | 14.5d | 0d | Jonathan | 12h |
| 19 | 1.16 | As a user I want to be able to use the first tier of spells | 2d | 2010-04-22 14:36 | 2010-04-26 14:36 | 18 | 14.5d | 0d | Jonathan | 16h |
| 20 | 1.17 | As a developer I want a Profiling system to optimize code | 0.5d | 2010-04-26 14:36 | 2010-04-27 09:36 | 19 | 14.5d | 0d | Jonathan | 4h |
| 21 | 1.18 | As a developer I want a State Machine to change states based on needs | 0.5d | 2010-04-27 09:36 | 2010-04-27 14:36 | 20 | 14.5d |  | Jonathan | 4h |
| 23 | 1.19 | As a developer I want the maps to save and load using relative paths | 0.2d | 2010-04-20 08:00 | 2010-04-20 09:36 |  | 15.5d | 0d | Pablo | 1.6h |
| 24 | 1.20 | As a programmer I want an In-Game engine to render the maps | 1.5d | 2010-04-20 09:36 | 2010-04-21 14:36 | 23 | 15.5d | 0d | Pablo | 12h |
| 25 | 1.21 | As a user I want tiles to be able to be destroyed | 0.5d | 2010-04-21 14:36 | 2010-04-22 09:36 | 24 | 15.5d | 0d | Pablo | 4h |
| 26 | 1.22 | As a user I want to see characters, objects, spells, and terrain collide | 0.5d | 2010-04-22 09:36 | 2010-04-22 14:36 | 25 | 15.5d | 0d | Pablo | 4h |
| 27 | 1.23 | As a designer I want to be able to easily create and edit game levels with the world editor | 2d | 2010-04-22 14:36 | 2010-04-26 14:36 | 26 | 15.5d |  | Pablo | 16h |

| ID | WBS | Task | Duration | Start | Finish | Predecessors | Complete | Remaining | Total slack | Free slack | Constraint | Resources | Work | Actual work |
| --- | --- | --- | --- | --- | --- | --- | --- | --- | --- | --- | --- | --- | --- | --- |
| 29 | 2 | **Sprint 3** | 11.4d | 2010-05-03 08:00 A | 2010-05-18 11:12 |  | 34% | 7.52d | 0d |  |  |  | 308h | 104.8h |
| 30 | 2.1 | As a developer, I want the enemy spawner to respawn enemies | 0.5d | 2010-05-03 08:00 A | 2010-05-03 12:00 A |  | 100% |  |  |  | start no earlier than 2010-05-03 08:00 | Sam Mathis | 4h | 4h |
| 31 | 2.2 | As a user, I want a free-fire mode while using the game pad | 1d | 2010-05-03 13:00 A | 2010-05-04 12:00 A | 30 | 100% |  |  |  | start no earlier than 2010-05-03 08:00 | Sam Mathis | 8h | 8h |
| 32 | 2.3 | As a user, I want the camera to function properly when playing with two players. | 0.5d | 2010-05-04 13:00 A | 2010-05-04 17:00 A | 31 | 100% |  |  |  | start no earlier than 2010-05-03 08:00 | Sam Mathis | 4h | 4h |
| 33 | 2.4 | As a developer, I want tier 2 spells to rely on energy picked up in the game | 1d | 2010-05-05 08:00 A | 2010-05-05 17:00 A | 32 | 100% |  |  |  | start no earlier than 2010-05-03 08:00 | Sam Mathis | 8h | 8h |
| 34 | 2.5 | As a user, I want multiple fire spells | 1d | 2010-05-06 08:00 A | 2010-05-06 17:00 A | 33 | 100% |  |  |  | start no earlier than 2010-05-03 08:00 | Sam Mathis | 8h | 8h |
| 35 | 2.6 | As a programmer, I want to implement a scoring system based on time and destruction | 1d | 2010-05-07 08:00 | 2010-05-07 17:00 | 34 |  |  | 0d |  | start no earlier than 2010-05-03 08:00 | Sam Mathis | 8h |  |
| 36 | 2.7 | Sticky Numbers | 0.2d | 2010-05-10 08:00 | 2010-05-10 09:36 | 35 |  |  | 0d |  | start no earlier than 2010-05-03 08:00 | Sam Mathis | 1.6h |  |
| 37 | 2.8 | As a developer, I want the game to be arcade machine compliant | 0.5d | 2010-05-10 09:36 | 2010-05-10 14:36 | 36 |  |  | 0d |  | start no earlier than 2010-05-03 08:00 | Sam Mathis | 4h |  |
| 38 | 2.9 | As a developer, I want the tier 1 fire spells done | 0.2d | 2010-05-10 14:36 | 2010-05-10 16:12 | 37 |  |  | 0d |  | start no earlier than 2010-05-03 08:00 | Sam Mathis | 1.6h |  |
| 39 | 2.10 | As a Designer, I want the Fire Enemy to be different from the other enemies | 1.5d | 2010-05-10 16:12 | 2010-05-12 11:12 | 38 |  |  | 0d |  | start no earlier than 2010-05-03 08:00 | Sam Mathis | 12h |  |
| 40 | 2.11 | As a developer, I want the Air Currents in the game that push the player around | 0.5d | 2010-05-12 11:12 | 2010-05-12 16:12 | 39 |  |  | 0d |  | start no earlier than 2010-05-03 08:00 | Sam Mathis | 4h |  |
| 41 | 2.12 | As a user, I want the spells to have effects on the alternate terrain | 1.5d | 2010-05-12 16:12 | 2010-05-14 11:12 | 40 |  |  | 0d |  | start no earlier than 2010-05-03 08:00 | Sam Mathis | 12h |  |
| 42 | 2.13 | As a user, I want to play different multiplayer game modes such as co-op and death-match | 2d | 2010-05-14 11:12 | 2010-05-18 11:12 | 41 |  |  | 0d |  | start no earlier than 2010-05-03 08:00 | Sam Mathis | 16h |  |
| 44 | 2.14 | As a user, I would like to have a HUD. | 1d | 2010-05-03 08:00 A | 2010-05-03 17:00 A |  | 100% |  |  |  | start no earlier than 2010-05-03 08:00 | Mike Hatter | 8h | 8h |
| 45 | 2.15 | As a user, I want my option configurations saved auto-magically | 0.5d | 2010-05-04 08:00 A | 2010-05-04 12:00 A | 44 | 100% |  |  |  | start no earlier than 2010-05-03 08:00 | Mike Hatter | 4h | 4h |
| 46 | 2.16 | As a developer, I want to implement a win/lose condition | 1d | 2010-05-04 13:00 A | 2010-05-05 12:00 A | 45 | 100% |  |  |  | start no earlier than 2010-05-03 08:00 | Mike Hatter | 8h | 8h |
| 47 | 2.17 | As a designer, I want an attract mode that attracts people. | 0.5d | 2010-05-05 13:00 A | 2010-05-05 17:00 A | 46 | 100% |  |  |  | start no earlier than 2010-05-03 08:00 | Mike Hatter | 4h | 4h |
| 48 | 2.18 | As a developer, I want Lava terrain to hurt the player | 0.2d | 2010-05-06 08:00 A | 2010-05-06 09:36 A | 47 | 100% |  |  |  | start no earlier than 2010-05-03 08:00 | Mike Hatter | 1.6h | 1.6h |
| 49 | 2.19 | As a user, I want to transition between levels | 1.5d | 2010-05-06 09:36 | 2010-05-07 14:36 | 48 |  |  | 1.2d | 0d | start no earlier than 2010-05-03 08:00 | Mike Hatter | 12h |  |
| 50 | 2.20 | As a developer, I want the tier 1 ice spells done | 0.5d | 2010-05-07 14:36 | 2010-05-10 09:36 | 49 |  |  | 1.2d | 0d | start no earlier than 2010-05-03 08:00 | Mike Hatter | 4h |  |
| 51 | 2.21 | As a user, I want multiple ice spells | 1.5d | 2010-05-10 09:36 | 2010-05-11 14:36 | 50 |  |  | 1.2d | 0d | start no earlier than 2010-05-03 08:00 | Mike Hatter | 12h |  |
| 52 | 2.22 | As a user, I want a mini-map to help me get around the level | 2d | 2010-05-11 14:36 | 2010-05-13 14:36 | 51 |  |  | 1.2d | 0d | start no earlier than 2010-05-03 08:00 | Mike Hatter | 16h |  |
| 53 | 2.23 | As a Designer, I want the Ice Enemy to be different from the other enemies | 0.5d | 2010-05-13 14:36 | 2010-05-14 09:36 | 52 |  |  | 1.2d | 0d | start no earlier than 2010-05-03 08:00 | Mike Hatter | 4h |  |
| 54 | 2.24 | As a developer, I want the particle engine to be complete | 1d | 2010-05-14 09:36 | 2010-05-17 09:36 | 53 |  |  | 1.2d |  | start no earlier than 2010-05-03 08:00 | Mike Hatter | 8h |  |
| 56 | 2.25 | As a designer, I want spells to increase in power the more you use that type of spell | 0.2d | 2010-05-03 08:00 A | 2010-05-03 09:36 A |  | 100% |  |  |  | start no earlier than 2010-05-03 08:00 | Jonathan Caro | 1.6h | 1.6h |
| 57 | 2.26 | As a designer, I want the enemies to be effected differently based on their type and spell type | 0.5d | 2010-05-03 09:36 A | 2010-05-03 14:36 A | 56 | 100% |  |  |  | start no earlier than 2010-05-03 08:00 | Jonathan Caro | 4h | 4h |
| 58 | 2.27 | As a user, I want multiple earth spells | 2d | 2010-05-03 14:36 A | 2010-05-05 14:36 A | 57 | 100% |  |  |  | start no earlier than 2010-05-03 08:00 | Jonathan Caro | 16h | 16h |
| 59 | 2.28 | As a developer, I want the tier 1 wind spells done | 0.5d | 2010-05-05 14:36 A | 2010-05-06 09:36 A | 58 | 100% |  |  |  | start no earlier than 2010-05-03 08:00 | Jonathan Caro | 4h | 4h |
| 60 | 2.29 | As a user, I want multiple wind spells | 2d | 2010-05-06 09:36 | 2010-05-10 09:36 | 59 |  |  | 4.2d | 0d | start no earlier than 2010-05-03 08:00 | Jonathan Caro | 16h |  |
| 61 | 2.30 | As a Designer, I want the Wind Enemy to be different from the other enemies | 2d | 2010-05-10 09:36 | 2010-05-12 09:36 | 60 |  |  | 4.2d |  | start no earlier than 2010-05-03 08:00 | Jonathan Caro | 16h |  |
| 63 | 2.31 | As a designer, I want the player to hit switches to progress through the level | 2d | 2010-05-03 08:00 A | 2010-05-04 17:00 A |  | 100% |  |  |  | start no earlier than 2010-05-03 08:00 | Xiaodong Weng | 16h | 16h |
| 64 | 2.32 | As a user, I want my spells to cancel out hostile spells | 0.2d | 2010-05-05 08:00 A | 2010-05-05 09:36 A | 63 | 100% |  |  |  | start no earlier than 2010-05-03 08:00 | Xiaodong Weng | 1.6h | 1.6h |
| 65 | 2.33 | As a Designer, I want the Earth Enemy to be different from the other enemies | 0.5d | 2010-05-05 09:36 A | 2010-05-05 14:36 A | 64 | 100% |  |  |  | start no earlier than 2010-05-03 08:00 | Xiaodong Weng | 4h | 4h |
| 66 | 2.34 | As a user, I want the state of the terrain to be saved | 1.5d | 2010-05-05 14:36 | 2010-05-07 09:36 | 65 |  |  | 1.7d | 0d | start no earlier than 2010-05-03 08:00 | Xiaodong Weng | 12h |  |
| 67 | 2.35 | As a developer, I want water terrain to hurt the player and flood the level | 1d | 2010-05-07 09:36 | 2010-05-10 09:36 | 66 |  |  | 1.7d | 0d | start no earlier than 2010-05-03 08:00 | Xiaodong Weng | 8h |  |
| 68 | 2.36 | As a user, I want the spells of different elements to interact with each other | 2d | 2010-05-10 09:36 | 2010-05-12 09:36 | 67 |  |  | 1.7d | 0d | start no earlier than 2010-05-03 08:00 | Xiaodong Weng | 16h |  |
| 69 | 2.37 | As a designer, I want a final boss, decided by how quickly the player gets to the end. | 2d | 2010-05-12 09:36 | 2010-05-14 09:36 | 68 |  |  | 1.7d | 0d | start no earlier than 2010-05-03 08:00 | Xiaodong Weng | 16h |  |
| 70 | 2.38 | Switches allow for next level | 0.5d | 2010-05-14 09:36 | 2010-05-14 14:36 | 69 |  |  | 1.7d |  | start no earlier than 2010-05-03 08:00 | Xiaodong Weng | 4h |  |
